# 集控III区高级应用

Schedule from a web Gantt chart, 2024-05-06 to 2025-04-01.
Saturdays and Sundays are off

## Schedule

| ID | WBS | Task | Duration | Start | Finish | Complete | inPeople | Status |
| --- | --- | --- | --- | --- | --- | --- | --- | --- |
| 2 | 1 | **一期** | 129d | 2024-05-06 | 2024-10-31 | 1% |  |  |
| 3 | 1.1 | **V0.1 架构搭建与需求梳理** | 5d | 2024-05-06 | 2024-05-10 | 25% |  |  |
| 4 | 1.1.1 | **架构搭建** | 5d | 2024-05-06 | 2024-05-10 | 50% | 王思威,刘祖勉 |  |
| 5 | 1.1.1.1 | 后端架构搭建 | 1d | 2024-05-06 | 2024-05-06 | 100% | 王思威 | done |
| 6 | 1.1.1.2 | 前端架构搭建 | 1d | 2024-05-10 | 2024-05-10 |  | 刘祖勉 |  |
| 7 | 1.1.2 | 需求梳理 | 2d | 2024-05-09 | 2024-05-10 |  | 黄炎峰 |  |
| 8 | 1.2 | **V1.1.0 实时监视模块(区域监视) 系统管理 与组件迁移** | 10d | 2024-05-13 | 2024-05-24 |  |  | waiting |
| 9 | 1.2.1 | 需求评审 | 1d | 2024-05-13 | 2024-05-13 |  | 黄炎峰 | waiting |
| 10 | 1.2.2 | UI设计 | 8d | 2024-05-13 | 2024-05-22 |  | 黄书雅 | waiting |
| 11 | 1.2.3 | 前端开发 | 8d | 2024-05-13 | 2024-05-22 |  | 韦泉助, 刘祖勉, 刘美坤 | waiting |
| 12 | 1.2.4 | 后端开发 | 8d | 2024-05-13 | 2024-05-22 |  |  | waiting |
| 13 | 1.2.5 | 测试 | 2d | 2024-05-23 | 2024-05-24 |  | 张艳杰 | waiting |
| 14 | 1.2.6 | V1.1.1 需求设计 | 8d | 2024-05-13 | 2024-05-22 |  | 黄炎峰 | waiting |
| 15 | 1.2.7 | V1.1.1 需求评审 | 1d | 2024-05-23 | 2024-05-23 |  | 黄炎峰 | waiting |
| 16 | 1.2.8 | V1.1.1 UI设计 | 2d | 2024-05-23 | 2024-05-24 |  | 黄书雅 | waiting |
| 17 | 1.3 | **V1.1.1 实时监视 场站监视+设备监视(页面功能)** | 10d | 2024-05-27 | 2024-06-07 |  |  | waiting |
| 18 | 1.3.1 | UI设计 | 5d | 2024-05-27 | 2024-05-31 |  | 黄书雅 | waiting |
| 19 | 1.3.2 | 前端开发 | 8d | 2024-05-27 | 2024-06-05 |  |  | waiting |
| 20 | 1.3.3 | 后端开发 | 8d | 2024-05-27 | 2024-06-05 |  |  | waiting |
| 21 | 1.3.4 | 测试 | 2d | 2024-06-06 | 2024-06-07 |  | 张艳杰 | waiting |
| 22 | 1.3.5 | V1.1.2 需求设计 | 8d | 2024-05-27 | 2024-06-05 |  | 黄炎峰 | waiting |
| 23 | 1.3.6 | V1.1.2 需求评审 | 1d | 2024-06-06 | 2024-06-06 |  | 黄炎峰 | waiting |
| 24 | 1.3.7 | V1.1.2 UI设计 | 2d | 2024-06-06 | 2024-06-07 |  | 黄书雅 | waiting |
| 25 | 1.4 | V1.1.2 运营中心开发 | 20d | 2024-06-10 | 2024-07-05 |  |  | waiting |
| 26 | 1.5 | V1.1.4 数据分析与健康管理(一期开发) | 20d | 2024-07-08 | 2024-08-02 |  |  | waiting |
| 27 | 1.6 | V1.1.6 3D可视化与告警中心(一期开发) | 20d | 2024-08-05 | 2024-08-30 |  |  | waiting |
| 28 | 1.7 | V1.1.8 APP端开发与运维检修中心 | 35d | 2024-09-02 | 2024-10-18 |  |  | waiting |
| 29 | 1.8 | V1.1.11 一期收尾 | 8d | 2024-10-21 | 2024-10-30 |  |  | waiting |
| 30 | 1.9 | 阶段评审 | 1d | 2024-10-31 | 2024-10-31 |  |  | waiting |

| ID | WBS | Task | Duration | Start | Finish | Status | inPeople |
| --- | --- | --- | --- | --- | --- | --- | --- |
| 31 | 2 | **二期** | 107d | 2024-11-01 | 2025-03-31 | waiting |  |
| 32 | 2.1 | V2.1.0 数据分析与健康管理(二期开发) | 21d | 2024-11-01 | 2024-11-29 | waiting |  |
| 33 | 2.2 | V2.1.1 健康管理开发 + APP端开发 | 10d | 2024-11-18 | 2024-11-29 | waiting |  |
| 34 | 2.3 | V2.1.2 智能监盘V1开发 | 10d | 2024-12-02 | 2024-12-13 | waiting |  |
| 35 | 2.4 | V2.1.3 智能监盘V2开发 + APP端开发 | 10d | 2024-12-16 | 2024-12-27 | waiting |  |
| 36 | 2.5 | V2.1.4 生产管理平台二次开发 | 22d | 2024-12-30 | 2025-01-28 | waiting |  |
| 37 | 2.6 | V2.1.5 运维检修平台与生产管理平台打通 | 9d | 2025-02-04 | 2025-02-14 | waiting |  |
| 38 | 2.7 | V2.1.6 APP端开发 | 10d | 2025-02-17 | 2025-02-28 | waiting |  |
| 39 | 2.8 | V2.1.7 APP端开发 | 10d | 2025-03-03 | 2025-03-14 | waiting |  |
| 40 | 2.9 | V2.1.8 | 10d | 2025-03-17 | 2025-03-28 | waiting |  |
| 41 | 2.10 | 阶段评审 | 1d | 2025-03-31 | 2025-03-31 | waiting | 王思威, 项目干系人 |
| 42 | 3 | **三期** | 1d | 2025-04-01 | 2025-04-01 | waiting |  |
| 43 | 3.1 | V3.1.0 | 1d | 2025-04-01 | 2025-04-01 | waiting |  |

Notes:
- 36: 存在元旦假期
